# 软件开发

Schedule from MS Project, 2019-07-29 to 2020-02-20.

## Calendars

- 标准: Mon-Fri 08:00-12:00, 13:00-17:00; Sat-Sun off.
- 24 小时: Mon-Sun 00:00-24:00.

## Resources

| Resource |
| --- |
| 管理人员 |
| 项目经理 |
| 分析人员 |
| 开发人员 |
| 测试人员 |
| 培训人员 |
| 技术联络人员 |
| 部署小组 |

## Schedule

| ID | WBS | Task | Type | Duration | Start | Finish | Predecessors | Total slack | Free slack | Calendar | Resources | Work |
| --- | --- | --- | --- | --- | --- | --- | --- | --- | --- | --- | --- | --- |
| 1 | 1 | **项目范围规划** |  | 3.5d | 2019-07-29 | 2019-08-01 |  | -39d | 0d |  |  | 28h |
| 2 | 1.1 | 确定项目范围 |  | 4h | 2019-07-29 | 2019-07-29 |  | 0d |  |  | 管理人员 | 4h |
| 3 | 1.2 | 获得项目所需资金 |  | 1d | 2019-07-29 | 2019-07-30 | 2 | 0d |  | 24 小时 | 管理人员 | 8h |
| 4 | 1.3 | 定义预备资源 |  | 1d | 2019-07-30 | 2019-07-31 | 3 | 0d |  | 24 小时 | 项目经理 | 8h |
| 5 | 1.4 | 获得核心资源 |  | 1d | 2019-07-31 | 2019-08-01 | 4 | 0d |  | 24 小时 | 项目经理 | 8h |
| 6 | 1.5 | 项目范围规划完成 | milestone | 0d | 2019-08-01 | 2019-08-01 | 5 | -164.88d | 0d | 24 小时 |  |  |
| 7 | 2 | **分析/软件需求** |  | 59.88d | 2019-08-01 | 2019-08-21 |  | -165d | 0d | 24 小时 |  | 120h |
| 8 | 2.1 | 行为需求分析 |  | 5d | 2019-08-01 | 2019-08-08 | 6 | 0d |  | 24 小时 | 分析人员 | 40h |
| 9 | 2.2 | 起草初步的软件规范 |  | 3d | 2019-08-08 | 2019-08-13 | 8 | 0d |  | 24 小时 | 分析人员 | 24h |
| 10 | 2.3 | 制定初步预算 |  | 2d | 2019-08-13 | 2019-08-15 | 9 | 0d |  | 24 小时 | 项目经理 | 16h |
| 11 | 2.4 | 工作组共同审阅软件规范/预算 |  | 4h | 2019-08-15 | 2019-08-15 | 10 | 0d |  | 24 小时 | 项目经理; 分析人员 | 8h |
| 12 | 2.5 | 根据反馈修改软件规范 |  | 1d | 2019-08-16 | 2019-08-16 | 11 | 0d |  | 24 小时 | 分析人员 | 8h |
| 13 | 2.6 | 确定交付期限 |  | 1d | 2019-08-19 | 2019-08-19 | 12 | 0d |  | 24 小时 | 项目经理 | 8h |
| 14 | 2.7 | 获得开展后续工作的批准(概念、期限和预算) |  | 4h | 2019-08-20 | 2019-08-20 | 13 | 0d |  | 24 小时 | 管理人员; 项目经理 | 8h |
| 15 | 2.8 | 获得所需资源 |  | 1d | 2019-08-20 | 2019-08-21 | 14 | 0d |  | 24 小时 | 项目经理 | 8h |
| 16 | 2.9 | 分析工作完成 | milestone | 0d | 2019-08-21 | 2019-08-21 | 15 | -164.88d | 0d | 24 小时 |  |  |
| 17 | 3 | **设计** |  | 60.5d | 2019-08-21 | 2019-09-10 |  | -165d | 0d | 24 小时 |  | 120h |
| 18 | 3.1 | 审阅初步的软件规范 |  | 2d | 2019-08-21 | 2019-08-23 | 16 | 0d |  | 24 小时 | 分析人员 | 16h |
| 19 | 3.2 | 制定功能规范 |  | 5d | 2019-08-23 | 2019-08-30 | 18 | 0d |  | 24 小时 | 分析人员 | 40h |
| 20 | 3.3 | 根据功能规范开发原型 |  | 4d | 2019-08-30 | 2019-09-05 | 19 | 0d |  | 24 小时 | 分析人员 | 32h |
| 21 | 3.4 | 审阅功能规范 |  | 2d | 2019-09-05 | 2019-09-09 | 20 | 0d |  | 24 小时 | 管理人员 | 16h |
| 22 | 3.5 | 根据反馈修改功能规范 |  | 1d | 2019-09-09 | 2019-09-10 | 21 | 0d |  | 24 小时 | 管理人员 | 8h |
| 23 | 3.6 | 获得开展后续工作的批准 |  | 4h | 2019-09-10 | 2019-09-10 | 22 | 0d |  | 24 小时 | 管理人员; 项目经理 | 8h |
| 24 | 3.7 | 设计工作完成 | milestone | 0d | 2019-09-10 | 2019-09-10 | 23 | -163.12d | 0d | 24 小时 |  |  |

| ID | WBS | Task | Type | Duration | Start | Finish | Predecessors | Total slack | Free slack | Calendar | Resources | Work |
| --- | --- | --- | --- | --- | --- | --- | --- | --- | --- | --- | --- | --- |
| 25 | 4 | **开发** |  | 115.12d | 2019-09-17 | 2019-10-25 |  | -165d | 0d | 24 小时 |  | 264h |
| 26 | 4.1 | 审阅功能规范 |  | 1d | 2019-09-17 | 2019-09-17 | 24, 33 | -165d | 0d | 24 小时 | 开发人员 | 8h |
| 27 | 4.2 | 确定模块化/分层设计参数 |  | 1d | 2019-09-18 | 2019-09-18 | 26 | -165d | 0d | 24 小时 | 开发人员 | 8h |
| 28 | 4.3 | 分派任务给开发人员 |  | 1d | 2019-09-19 | 2019-09-19 | 27 | -165d | 0d | 24 小时 | 开发人员 | 8h |
| 29 | 4.4 | 编写代码 |  | 15d | 2019-09-20 | 2019-10-10 | 28 | -165d | 0d | 24 小时 | 开发人员 | 120h |
| 30 | 4.5 | 开发人员测试(初步调试) |  | 15d | 2019-10-07 | 2019-10-25 | 29FS-7.5% | -18d | 0d | 24 小时 | 开发人员 | 120h |
| 31 | 4.6 | 开发工作完毕 | milestone | 0d | 2019-10-25 | 2019-10-25 | 30 | -10.12d | 0d | 24 小时 |  |  |
| 32 | 5 | **测试** |  | 427.12d | 2019-09-11 | 2020-01-31 |  | -165d | 0d | 24 小时 |  | 280h |
| 33 | 5.1 | 根据产品规范制定单元测试计划 |  | 4d | 2019-09-11 | 2019-09-16 | 24 | -165d | 0d | 24 小时 | 测试人员 | 32h |
| 34 | 5.2 | 根据产品规范制定整体测试计划 |  | 4d | 2019-11-18 | 2019-11-21 | 24, 41 | 273d |  | 24 小时 | 测试人员 | 32h |
| 35 | 5.3 | **单元测试** |  | 55.12d | 2019-10-28 | 2019-11-15 |  | 21d |  | 24 小时 |  | 120h |
| 36 | 5.3.1 | 审阅模块化代码 |  | 5d | 2019-10-28 | 2019-11-01 | 33, 31 | 21d | 7.88d | 24 小时 | 测试人员 | 40h |
| 37 | 5.3.2 | 测试组件模块是否符合产品规范 |  | 2d | 2019-11-04 | 2019-11-05 | 31, 36 | 21d | 1.88d | 24 小时 | 测试人员 | 16h |
| 38 | 5.3.3 | 找出不符合产品规范的异常情况 |  | 3d | 2019-11-06 | 2019-11-08 | 37 | 21d | 7.88d | 24 小时 | 测试人员 | 24h |
| 39 | 5.3.4 | 修改代码 |  | 3d | 2019-11-11 | 2019-11-13 | 38 | 21d | 1.88d | 24 小时 | 测试人员 | 24h |
| 40 | 5.3.5 | 重新测试经过修改的代码 |  | 2d | 2019-11-14 | 2019-11-15 | 39 | 21d | 0d | 24 小时 | 测试人员 | 16h |
| 41 | 5.3.6 | 单元测试完成 | milestone | 0d | 2019-11-15 | 2019-11-15 | 40 | 28.88d | 7.88d | 24 小时 |  |  |
| 42 | 5.4 | **整体测试** |  | 46.12d | 2020-01-16 | 2020-01-31 |  | -156d | 0d | 24 小时 |  | 96h |
| 43 | 5.4.1 | 测试模块集成情况 |  | 5d | 2020-01-16 | 2020-01-22 | 41, 56 | -162d | 0d | 24 小时 | 测试人员 | 40h |
| 44 | 5.4.2 | 找出不符合规范的异常情况 |  | 2d | 2020-01-23 | 2020-01-24 | 43 | -156d | 0d | 24 小时 | 测试人员 | 16h |
| 45 | 5.4.3 | 修改代码 |  | 3d | 2020-01-27 | 2020-01-29 | 44 | -162d | 0d | 24 小时 | 测试人员 | 24h |
| 46 | 5.4.4 | 重新测试经过修改的代码 |  | 2d | 2020-01-30 | 2020-01-31 | 45 | -156d | 0d | 24 小时 | 测试人员 | 16h |
| 47 | 5.4.5 | 整体测试完成 | milestone | 0d | 2020-01-31 | 2020-01-31 | 46 | -154.12d | 0d | 24 小时 |  |  |
| 48 | 6 | **培训** |  | 130.12d | 2019-12-03 | 2020-01-15 |  | -162d | 0d | 24 小时 |  | 256h |
| 49 | 6.1 | 制定针对最终用户的培训规范 |  | 3d | 2019-12-03 | 2019-12-05 | 24, 66 | -162d | 0d | 24 小时 | 培训人员 | 24h |
| 50 | 6.2 | 制定针对产品技术支持人员的培训规范 |  | 3d | 2019-12-06 | 2019-12-10 | 24, 49 | -162d | 0d | 24 小时 | 培训人员 | 24h |
| 51 | 6.3 | 确定培训方法(基于计算机的培训、教室授课等) |  | 2d | 2019-12-11 | 2019-12-12 | 24, 50 | -162d | 0d | 24 小时 | 培训人员 | 16h |
| 52 | 6.4 | 编写培训材料 |  | 3w | 2019-12-13 | 2020-01-02 | 49, 31, 50, 51 | -156d | 0d | 24 小时 | 培训人员 | 120h |
| 53 | 6.5 | 研究培训材料的可用性 |  | 4d | 2020-01-03 | 2020-01-08 | 52 | -162d | 0d | 24 小时 | 培训人员 | 32h |
| 54 | 6.6 | 对培训材料进行最后处理 |  | 3d | 2020-01-09 | 2020-01-13 | 53 | -162d | 0d | 24 小时 | 培训人员 | 24h |
| 55 | 6.7 | 制定培训机制 |  | 2d | 2020-01-14 | 2020-01-15 | 54 | -162d | 0d | 24 小时 | 培训人员 | 16h |
| 56 | 6.8 | 培训材料完成 | milestone | 0d | 2020-01-15 | 2020-01-15 | 55 | -154.12d | 0d | 24 小时 |  |  |

| ID | WBS | Task | Type | Duration | Start | Finish | Predecessors | Total slack | Free slack | Calendar | Resources | Work |
| --- | --- | --- | --- | --- | --- | --- | --- | --- | --- | --- | --- | --- |
| 57 | 7 | **文档** |  | 247.12d | 2019-09-11 | 2019-12-02 |  | -160.12d | 0d | 24 小时 |  | 336h |
| 58 | 7.1 | 制定“帮助”规范 |  | 1d | 2019-11-04 | 2019-11-04 | 24, 65 | -162d | 0d | 24 小时 | 技术联络人员 | 8h |
| 59 | 7.2 | 开发“帮助”系统 |  | 3w | 2019-11-05 | 2019-11-25 | 58, 29FS-5% | -162d | 0d | 24 小时 | 技术联络人员 | 120h |
| 60 | 7.3 | 审阅“帮助”文档 |  | 3d | 2019-11-26 | 2019-11-28 | 59 | -162d | 0d | 24 小时 | 技术联络人员 | 24h |
| 61 | 7.4 | 根据反馈修改“帮助”文档 |  | 2d | 2019-11-29 | 2019-12-02 | 60 | -162d | 0d | 24 小时 | 技术联络人员 | 16h |
| 62 | 7.5 | 制定用户手册规范 |  | 2d | 2019-09-11 | 2019-09-12 | 24 | -87d | 0d | 24 小时 | 技术联络人员 | 16h |
| 63 | 7.6 | 编写用户手册 |  | 3w | 2019-10-08 | 2019-10-28 | 62, 29FS-5% | -162d | 0d | 24 小时 | 技术联络人员 | 120h |
| 64 | 7.7 | 审阅所有的用户文档 |  | 2d | 2019-10-29 | 2019-10-30 | 63 | -162d | 0d | 24 小时 | 技术联络人员 | 16h |
| 65 | 7.8 | 根据反馈修改用户文档 |  | 2d | 2019-10-31 | 2019-11-01 | 64 | -156d | 0d | 24 小时 | 技术联络人员 | 16h |
| 66 | 7.9 | 文档完成 | milestone | 0d | 2019-12-02 | 2019-12-02 | 65, 61, 64 | -160.12d | 0d | 24 小时 |  |  |
| 67 | 8 | **试生产** |  | 522.5d | 2019-08-21 | 2020-02-11 |  | -160.12d | 0d | 24 小时 |  | 64h |
| 68 | 8.1 | 确定测试群体 |  | 1d | 2019-08-21 | 2019-08-22 | 16 | 291.62d | 0d | 24 小时 | 项目经理 | 8h |
| 69 | 8.2 | 确定软件分发机制 |  | 1d | 2019-08-22 | 2019-08-22 | 68 | 292.5d |  | 24 小时 |  |  |
| 70 | 8.3 | 安装/部署软件 |  | 1d | 2020-02-03 | 2020-02-03 | 47, 69, 66, 56 | -162d | 0d | 24 小时 | 部署小组 | 8h |
| 71 | 8.4 | 获得用户反馈 |  | 1w | 2020-02-04 | 2020-02-10 | 70 | -162d | 0d | 24 小时 | 部署小组 | 40h |
| 72 | 8.5 | 评估测试信息 |  | 1d | 2020-02-11 | 2020-02-11 | 71 | -162d | 0d | 24 小时 | 部署小组 | 8h |
| 73 | 8.6 | 试生产工作完成 | milestone | 0d | 2020-02-11 | 2020-02-11 | 72 | -160.12d | 0d | 24 小时 |  |  |
| 74 | 9 | **部署** |  | 19.12d | 2020-02-12 | 2020-02-18 |  | -162d | 0d | 24 小时 |  | 40h |
| 75 | 9.1 | 确定最终部署策略 |  | 1d | 2020-02-12 | 2020-02-12 | 73 | -162d | 0d | 24 小时 | 部署小组 | 8h |
| 76 | 9.2 | 确定部署方法 |  | 1d | 2020-02-13 | 2020-02-13 | 75 | -156d | 0d | 24 小时 | 部署小组 | 8h |
| 77 | 9.3 | 获得部署所需资源 |  | 1d | 2020-02-14 | 2020-02-14 | 76 | -156d | 0d | 24 小时 | 部署小组 | 8h |
| 78 | 9.4 | 培训技术支持人员 |  | 1d | 2020-02-17 | 2020-02-17 | 77 | -162d | 0d | 24 小时 | 部署小组 | 8h |
| 79 | 9.5 | 部署软件 |  | 1d | 2020-02-18 | 2020-02-18 | 78 | -162d | 0d | 24 小时 | 部署小组 | 8h |
| 80 | 9.6 | 部署工作完成 | milestone | 0d | 2020-02-18 | 2020-02-18 | 79 | -160.12d | 0d | 24 小时 |  |  |

| ID | WBS | Task | Type | Duration | Start | Finish | Predecessors | Total slack | Free slack | Constraint | Calendar | Resources | Work |
| --- | --- | --- | --- | --- | --- | --- | --- | --- | --- | --- | --- | --- | --- |
| 81 | 10 | **实施工作结束后的回顾** |  | 154.12d | 2019-12-31 | 2020-02-20 |  | -12d | 0d |  | 24 小时 |  | 24h |
| 82 | 10.1 | 将经验教训记录存档 |  | 1d | 2020-02-19 | 2020-02-19 | 80 | -162d | 0d |  | 24 小时 | 项目经理 | 8h |
| 83 | 10.2 | 分发给工作组成员 |  | 1d | 2020-02-20 | 2020-02-20 | 82 | -156d | 0d |  | 24 小时 | 项目经理 | 8h |
| 84 | 10.3 | 建立软件维护小组 |  | 1d | 2019-12-31 | 2019-12-31 | 83 | -154.12d | 0d | finish no later than 2019-12-31 | 24 小时 | 项目经理 | 8h |
| 85 | 10.4 | 回顾完成 | milestone | 0d | 2019-12-31 | 2019-12-31 | 84 | 153d | 0d |  | 24 小时 |  |  |
| 86 | 11 | 软件开发模板结束 | milestone | 0d | 2019-12-31 | 2019-12-31 | 85 | 153d |  |  | 24 小时 |  |  |
